# 甘特图1.2V

Schedule from MS Project, 2018-09-19 to 2019-01-14, 2 hours a day, A marks actual dates.

## Calendars

- Standard: Mon-Fri 08:00-12:00, 13:00-17:00; Sat-Sun off. Exceptions (off unless hours are given): 2018-09-19 to 2019-01-14 08:00-12:00, 13:00-17:00 (工作日).
- Calendar 1: Mon-Fri 08:00-12:00, 13:00-17:00; Sat-Sun off. Exceptions (off unless hours are given): 2018-09-19 to 2019-01-13 17:00-18:00, 19:00-20:00 (working, recurring).

## Resources

| Resource |
| --- |
| 刘向辉 |
| 左文正 |
| 陈祥斌 |
| 涂弘森 |
| 王安栋 |
| 杨枨 |
| 侯宏仑 |

## Schedule

| ID | WBS | Task | Type | Duration | Start | Finish | Predecessors | Complete | Remaining | Actual start | Actual finish | Constraint | Calendar | Resources | Work | Actual work | 总负责人 |
| --- | --- | --- | --- | --- | --- | --- | --- | --- | --- | --- | --- | --- | --- | --- | --- | --- | --- |
| 1 | 1 | **软件工程系列课程教学辅助网站** |  | 253h | 2018-09-19 08:00 A | 2019-01-14 19:00 |  | 30% | 176.51h |  |  |  | Calendar 1 | 左文正 [20%]; 陈祥斌 [20%]; 刘向辉 [20%]; 涂弘森 [20%]; 王安栋 [20%] | 609.44h | 99.47h | 刘向辉 |
| 2 | 1.1 | **项目前期准备** |  | 34h | 2018-09-19 08:00 | 2018-09-30 21:00 |  | 100% |  | 2018-09-21 17:00 | 2018-09-23 20:00 |  | Calendar 1 |  | 16h | 16h |  |
| 3 | 1.1.1 | **项目范围选定** |  | 14h | 2018-09-21 17:00 A | 2018-09-27 20:00 |  | 100% |  |  | 2018-09-21 20:00 |  | Calendar 1 |  | 10h | 10h |  |
| 4 | 1.1.1.1 | 小组第一次会议（讨论项目选题和后期分配资源） | milestone, manual | 2h | 2018-09-21 17:00 A | 2018-09-21 20:00 A |  | 100% |  |  |  |  | Calendar 1 | 左文正; 陈祥斌; 刘向辉; 涂弘森; 王安栋 | 10h | 10h | 左文正 |
| 5 | 1.1.2 | 资源配置 | manual | 4h | 2018-09-22 17:00 A | 2018-09-23 20:00 A | 4 | 100% |  |  |  | start no earlier than 2018-09-22 17:00 | Calendar 1 | 陈祥斌 | 4h | 4h | 陈祥斌 |
| 6 | 1.1.3 | logo设计 | manual | 2h | 2018-09-22 17:00 A | 2018-09-22 20:00 A | 4 | 100% |  |  |  |  | Calendar 1 | 涂弘森 [50%]; 刘向辉 [50%] | 2h | 2h | 涂弘森 |
| 7 | 1.2 | **可行性分析** |  | 17h | 2018-10-10 08:00 | 2018-10-14 17:00 |  | 100% |  | 2018-10-12 16:00 | 2018-10-13 20:00 |  | Calendar 1 |  | 9.5h | 9.5h |  |
| 8 | 1.2.1 | 小组第三次会议 | manual | 1h | 2018-10-12 19:00 A | 2018-10-12 20:00 A | 13FS+30h | 100% |  |  |  |  | Calendar 1 | 左文正; 陈祥斌; 刘向辉; 涂弘森; 王安栋 | 5h | 5h | 左文正 |
| 9 | 1.2.2 | 第三次会议记录 | manual | 0.5h | 2018-10-12 16:00 A | 2018-10-12 16:30 A | 8SS-1h | 100% |  |  |  |  |  | 左文正 | 0.5h | 0.5h |  |
| 10 | 1.2.3 | 方案设计 | manual | 2h | 2018-10-12 19:00 A | 2018-10-13 18:00 A | 8FS-1h | 100% |  |  |  |  | Calendar 1 | 涂弘森 | 2h | 2h | 涂弘森 |
| 11 | 1.2.4 | 可行性分析报告V0.1 | milestone, manual | 2h | 2018-10-13 17:00 A | 2018-10-13 20:00 A | 8 | 100% |  |  |  |  | Calendar 1 | 王安栋 [50%]; 涂弘森 [50%] | 2h | 2h | 涂弘森 |
| 12 | 1.3 | **项目计划** |  | 53h | 2018-09-27 17:00 A | 2018-10-23 19:00 |  | 95% | 2.44h |  |  |  | Calendar 1 |  | 55.47h | 53.47h |  |
| 13 | 1.3.1 | 小组第二次会议 | milestone, manual | 1h | 2018-09-27 17:00 A | 2018-09-27 18:00 A | 4FS+10h | 100% |  |  |  |  | Calendar 1 | 左文正; 陈祥斌; 刘向辉; 涂弘森; 王安栋 | 5h | 5h | 左文正 |
| 14 | 1.3.2 | 第二次会议记录 | manual | 0.5h | 2018-09-28 08:00 A | 2018-09-28 08:30 A | 13 | 100% |  |  |  |  |  | 左文正 | 0.5h | 0.5h |  |
| 15 | 1.3.3 | 甘特图绘制V0.1 | manual | 4h | 2018-09-27 19:00 A | 2018-09-29 18:00 A | 13 | 100% |  |  |  |  | Calendar 1 | 王安栋 | 4h | 4h | 王安栋 |
| 16 | 1.3.4 | WBS绘制 | manual | 2h | 2018-09-29 17:00 A | 2018-09-29 20:00 A | 13FS+3h | 100% |  |  |  |  | Calendar 1 | 左文正 | 2h | 2h | 左文正 |
| 17 | 1.3.5 | OBS绘制 | manual | 1h | 2018-09-29 17:00 A | 2018-09-29 18:00 A | 13FS+3h | 100% |  |  |  |  | Calendar 1 | 陈祥斌 | 1h | 1h | 陈祥斌 |
| 18 | 1.3.6 | 需求项目计划V0.1 | manual | 2h | 2018-09-30 17:00 A | 2018-09-30 20:00 A | 13FS+5h | 100% |  |  |  |  | Calendar 1 | 左文正 [20%]; 陈祥斌 [20%]; 刘向辉 [20%]; 涂弘森 [20%]; 王安栋 [20%] | 2h | 2h | 刘向辉 |
| 19 | 1.3.7 | 需求项目计划PPT制作 | manual | 2h | 2018-09-30 17:00 A | 2018-09-30 20:00 A | 18FS-2h | 100% |  |  |  |  | Calendar 1 | 左文正 | 2h | 2h |  |
| 20 | 1.3.8 | uml概述PPT | manual | 3h | 2018-10-12 17:00 A | 2018-10-13 18:00 A |  | 100% |  |  |  |  | Calendar 1 | 左文正 [33%]; 刘向辉 [33%]; 陈祥斌 [33%] | 2.97h | 2.97h |  |
| 21 | 1.3.9 | 甘特图完善V0.2 | manual | 2h | 2018-10-13 17:00 A | 2018-10-13 20:00 A | 15FS+27h | 100% |  |  |  |  | Calendar 1 | 王安栋 | 2h | 2h | 王安栋 |
| 22 | 1.3.10 | 需求工程项目计划V0.2 | manual | 2h | 2018-10-12 17:00 A | 2018-10-12 20:00 A | 18FS+22h | 100% |  |  |  |  | Calendar 1 | 左文正 [50%]; 刘向辉 [50%] | 2h | 2h | 左文正 |
| 23 | 1.3.11 | 小组第四次会议 | manual | 1h | 2018-10-17 19:00 A | 2018-10-17 20:00 A | 8FS+9h | 100% |  |  |  |  | Calendar 1 | 左文正; 陈祥斌; 刘向辉; 涂弘森; 王安栋 | 5h | 5h | 左文正 |
| 24 | 1.3.12 | 第四次会议记录 | manual | 0.5h | 2018-10-18 08:00 A | 2018-10-18 08:30 A | 23 | 100% |  |  |  |  |  | 左文正 | 0.5h | 0.5h |  |
| 25 | 1.3.13 | 需求项目计划完善V1.0 | manual | 2h | 2018-10-17 19:00 A | 2018-10-18 18:00 A | 22FS+9h | 100% |  |  |  |  | Calendar 1 | 刘向辉 | 2h | 2h | 刘向辉 |
| 26 | 1.3.14 | WBS、OBS修改0.2 | manual | 3h | 2018-10-18 17:00 A | 2018-10-19 18:00 A | 16FS+36h | 100% |  |  |  |  | Calendar 1 | 左文正 [50%]; 刘向辉 [50%] | 3h | 3h | 左文正 |
| 27 | 1.3.15 | 甘特图完善1.1 | manual | 2.5h | 2018-10-18 17:00 A | 2018-10-19 17:30 A | 22FS+10h | 100% |  |  |  |  | Calendar 1 | 王安栋 | 2.5h | 2.5h |  |
| 28 | 1.3.16 | 小组第五次会议 | milestone, manual | 1h | 2018-10-19 17:00 A | 2018-10-19 18:00 A | 23FS+2h | 100% |  |  |  |  | Calendar 1 | 左文正; 陈祥斌; 刘向辉; 涂弘森; 王安栋 | 5h | 5h | 左文正 |
| 29 | 1.3.17 | uml工具PPT | manual | 6h | 2018-10-20 08:00 A | 2018-10-20 15:00 A |  | 100% |  |  |  |  |  | 左文正 [50%]; 陈祥斌 [50%] | 6h | 6h |  |
| 30 | 1.3.18 | 项目章程 | manual | 3h | 2018-10-20 17:00 A | 2018-10-21 18:00 A | 28FS+1h | 100% |  |  |  |  | Calendar 1 | 涂弘森 | 3h | 3h | 涂弘森 |
| 31 | 1.3.19 | 项目总体计划 | manual | 1.5h | 2018-10-20 19:00 A | 2018-10-21 17:30 A | 28FS+2h | 100% |  |  |  |  | Calendar 1 | 王安栋 | 1.5h | 1.5h | 王安栋 |
| 32 | 1.3.20 | 甘特图完善1.2 | manual | 1.5h | 2018-10-20 17:30 A | 2018-10-20 20:00 A | 27FS+2h | 100% |  |  |  |  | Calendar 1 | 王安栋 | 1.5h | 1.5h |  |
| 33 | 1.3.21 | 需求工程项目计划0.3 | manual | 2h | 2018-10-22 17:00 | 2018-10-22 19:00 |  |  |  |  |  |  |  | 刘向辉 | 2h |  |  |

| ID | WBS | Task | Type | Duration | Start | Finish | Predecessors | Complete | Remaining | Actual start | Total slack | Calendar | Resources | Work | Actual work | 总负责人 |
| --- | --- | --- | --- | --- | --- | --- | --- | --- | --- | --- | --- | --- | --- | --- | --- | --- |
| 34 | 1.4 | **需求工程** |  | 127h | 2018-10-26 17:00 | 2018-12-28 19:00 |  | 12% | 111.25h | 2018-10-26 16:00 |  | Calendar 1 |  | 171h | 20.5h |  |
| 35 | 1.4.1 | 小组第六次会议 | milestone, manual | 1h | 2018-10-26 19:00 A | 2018-10-26 20:00 A | 28FS+14h | 100% |  |  |  | Calendar 1 | 左文正; 陈祥斌; 刘向辉; 涂弘森; 王安栋 | 5h | 5h | 左文正 |
| 36 | 1.4.2 | 第六次会议记录 | manual | 0.5h | 2018-10-26 16:00 A | 2018-10-26 16:30 A | 35FS-1h | 100% |  |  |  |  | 左文正 | 0.5h | 0.5h |  |
| 37 | 1.4.3 | 需求工程项目报告1.0和需求项目答辩ppt | manual | 3h | 2018-10-28 08:00 A | 2018-10-28 11:00 A |  | 100% |  |  |  |  | 刘向辉 | 3h | 3h |  |
| 38 | 1.4.4 | QA计划 | manual | 4h | 2018-10-27 17:00 A | 2018-10-28 12:00 |  | 75% | 1h |  |  |  | 涂弘森 | 4h | 3h |  |
| 39 | 1.4.5 | 甘特图完善1.3 | manual | 2h | 2018-10-27 17:00 A | 2018-10-28 10:00 | 32FS+30h | 75% | 0.5h |  |  |  | 王安栋 | 2h | 1.5h |  |
| 40 | 1.4.6 | uml工具PPT修改 | manual | 2h | 2018-10-27 17:00 A | 2018-10-28 10:00 | 29FS+16h | 75% | 0.5h |  |  |  | 王安栋 | 2h | 1.5h |  |
| 41 | 1.4.7 | uml基础1ppt | manual | 6h | 2018-10-27 17:00 A | 2018-10-28 15:00 A | 35FS+3h | 100% |  |  |  |  | 左文正 [50%]; 陈祥斌 [50%] | 6h | 6h |  |
| 42 | 1.4.8 | 甘特图1.4 | manual | 1.5h | 2018-10-28 15:00 | 2018-10-28 16:30 | 39FS+4h |  |  |  |  |  | 王安栋 | 1.5h |  |  |
| 43 | 1.4.9 | **需求获取活动** |  | 33h | 2018-10-29 08:00 | 2018-11-10 17:00 |  |  |  |  |  | Calendar 1 |  | 30.5h |  |  |
| 44 | 1.4.9.1 | 小组第七次会议 | milestone, manual | 1h | 2018-10-31 17:00 | 2018-10-31 18:00 | 35FS+8h |  |  |  |  | Calendar 1 | 左文正; 陈祥斌; 刘向辉; 涂弘森; 王安栋 | 5h |  | 左文正 |
| 45 | 1.4.9.2 | 第七次会议记录 | manual | 0.5h | 2018-10-31 17:00 | 2018-11-01 08:30 | 44FS-1h |  |  |  |  |  | 左文正 | 0.5h |  |  |
| 46 | 1.4.9.3 | 经济可行性报告0.3 | manual | 1d | 2018-11-01 17:00 | 2018-11-01 19:00 |  |  |  |  |  |  | 涂弘森 | 2h |  |  |
| 47 | 1.4.9.4 | 需求工程项目报告1.1 | manual | 1d | 2018-11-01 17:00 | 2018-11-01 19:00 |  |  |  |  |  |  | 刘向辉 | 2h |  |  |
| 48 | 1.4.9.5 | uml基础1ppt完善 | manual | 2h | 2018-11-02 17:00 | 2018-11-03 10:00 | 41FS+14h |  |  |  |  |  | 陈祥斌; 左文正 | 4h |  |  |
| 49 | 1.4.9.6 | uml基础2PPT0.1 | manual | 5h | 2018-11-03 17:00 | 2018-11-04 14:00 | 44FS+2h |  |  |  |  |  | 涂弘森 [20%]; 左文正 [20%]; 陈祥斌 [20%]; 刘向辉 [20%]; 王安栋 [20%] | 5h |  |  |
| 50 | 1.4.9.7 | 甘特图1.5 | manual | 1h | 2018-11-06 17:00 | 2018-11-06 18:00 | 42FS+12h |  |  |  |  |  | 王安栋 | 1h |  |  |
| 51 | 1.4.9.8 | uml基础2PPT修改0.2 | manual | 2h | 2018-11-08 17:00 | 2018-11-09 10:00 | 49FS+8h |  |  |  |  |  | 涂弘森 | 2h |  |  |
| 52 | 1.4.9.9 | 检查用户问题报告 | manual | 2h | 2018-11-07 17:00 | 2018-11-07 20:00 |  |  |  |  |  | Calendar 1 | 刘向辉 | 2h |  | 刘向辉 |
| 53 | 1.4.9.10 | 完善已有的需求 | manual | 1h | 2018-11-07 08:00 | 2018-11-07 09:00 |  |  |  |  |  | Calendar 1 | 左文正 | 1h |  | 陈祥斌 |
| 54 | 1.4.9.11 | **用户代表访谈** |  | 0d | 2018-11-08 17:00 | 2018-11-08 20:00 |  |  |  |  | 0d |  |  | 6h |  |  |
| 55 | 1.4.9.11.1 | 学生用户代表访谈 | manual | 2h | 2018-11-08 17:00 | 2018-11-08 20:00 | 53FS+2h |  |  |  |  | Calendar 1 | 陈祥斌 | 2h |  | 陈祥斌 |
| 56 | 1.4.9.11.2 | 游客用户代表访谈 | manual | 1h | 2018-11-08 17:00 | 2018-11-08 18:00 | 53FS+2h |  |  |  |  | Calendar 1 | 王安栋 | 1h |  | 王安栋 |
| 57 | 1.4.9.11.3 | 教师用户代表访谈 | manual | 2h | 2018-11-08 17:00 | 2018-11-08 20:00 | 53FS+2h |  |  |  |  | Calendar 1 | 涂弘森 | 2h |  | 左文正 |
| 58 | 1.4.9.11.4 | 管理员用户代表访谈 | manual | 1h | 2018-11-08 17:00 | 2018-11-08 18:00 | 53FS+2h |  |  |  |  | Calendar 1 | 刘向辉 | 1h |  | 刘向辉 |

| ID | WBS | Task | Type | Duration | Start | Finish | Predecessors | Calendar | Resources | Work | 总负责人 |
| --- | --- | --- | --- | --- | --- | --- | --- | --- | --- | --- | --- |
| 59 | 1.4.10 | **需求分析** |  | 41h | 2018-11-09 08:00 | 2018-11-25 17:00 |  | Calendar 1 |  | 36h |  |
| 60 | 1.4.10.1 | 小组第八次会议 | milestone, manual | 1h | 2018-11-09 17:00 | 2018-11-09 18:00 | 44FS+12h | Calendar 1 | 左文正; 陈祥斌; 刘向辉; 涂弘森; 王安栋 | 5h | 左文正 |
| 61 | 1.4.10.2 | 第八次会议记录 | manual | 0.5h | 2018-11-09 16:00 | 2018-11-09 16:30 | 60FS-1h |  | 左文正 | 0.5h |  |
| 62 | 1.4.10.3 | app模型设计 | manual | 1h | 2018-11-11 08:00 | 2018-11-11 09:00 |  |  | 刘向辉 [50%]; 涂弘森 [50%] | 1h |  |
| 63 | 1.4.10.4 | 应用环境建模（生态环境图） | manual | 4h | 2018-11-10 17:00 | 2018-11-11 20:00 |  | Calendar 1 | 刘向辉 [50%]; 陈祥斌 [50%] | 4h | 刘向辉 |
| 64 | 1.4.10.5 | 设计流程图 | manual | 4h | 2018-11-10 08:00 | 2018-11-10 12:00 |  | Calendar 1 | 王安栋 [50%]; 涂弘森 [50%] | 4h | 涂弘森 |
| 65 | 1.4.10.6 | 分析可实现性 | manual | 1.5h | 2018-11-10 08:00 | 2018-11-10 09:30 |  | Calendar 1 | 左文正 | 1.5h | 左文正 |
| 66 | 1.4.10.7 | 需求工程计划-修改 | manual | 2h | 2018-11-10 17:00 | 2018-11-10 20:00 | 37FS+26h | Calendar 1 | 左文正 [50%]; 陈祥斌 [50%] | 2h | 左文正 |
| 67 | 1.4.10.8 | 排列需求优先级 | manual | 1h | 2018-11-11 08:00 | 2018-11-11 09:00 |  | Calendar 1 | 刘向辉 | 1h | 刘向辉 |
| 68 | 1.4.10.9 | uml工具学习 | manual | 4h | 2018-11-13 17:00 | 2018-11-14 20:00 |  | Calendar 1 | 刘向辉 | 4h |  |
| 69 | 1.4.10.10 | 创建数据字典和ER图 | manual | 4h | 2018-11-14 08:00 | 2018-11-14 12:00 |  | Calendar 1 | 涂弘森 [50%]; 王安栋 [50%] | 4h | 涂弘森 |
| 70 | 1.4.10.11 | 需求分析计划 | manual | 4h | 2018-11-18 08:00 | 2018-11-18 12:00 |  | Calendar 1 | 陈祥斌 | 4h | 陈祥斌 |
| 71 | 1.4.10.12 | **需求建模** |  | 16h | 2018-11-12 08:00 | 2018-11-15 19:00 |  | Calendar 1 |  | 5h |  |
| 72 | 1.4.10.12.1 | 分析接口 | manual | 2h | 2018-11-12 08:00 | 2018-11-12 10:00 |  | Calendar 1 | 涂弘森 | 2h | 涂弘森 |
| 73 | 1.4.10.12.2 | 将需求分配到子系统 | manual | 3h | 2018-11-13 17:00 | 2018-11-14 18:00 |  | Calendar 1 | 陈祥斌 [30%]; 刘向辉 [30%]; 王安栋 [40%] | 3h | 左文正 |
| 74 | 1.4.11 | **规范说明** |  | 88h | 2018-11-16 08:00 | 2018-12-25 19:00 |  | Calendar 1 |  | 23h |  |
| 75 | 1.4.11.1 | 小组第九次会议 | milestone, manual | 1h | 2018-11-16 17:00 | 2018-11-16 18:00 | 60FS+13h | Calendar 1 | 左文正; 陈祥斌; 刘向辉; 涂弘森; 王安栋 | 5h | 左文正 |
| 76 | 1.4.11.2 | 第九次会议记录 | manual | 0.5h | 2018-11-16 16:00 | 2018-11-16 16:30 | 75FS-1h |  | 左文正 | 0.5h |  |
| 77 | 1.4.11.3 | 采用需求文档模板 | manual | 2h | 2018-11-17 19:00 | 2018-11-17 21:00 |  | Calendar 1 | 刘向辉 | 2h | 刘向辉 |
| 78 | 1.4.11.4 | 识别需求源头 | manual | 2h | 2018-11-19 08:00 | 2018-11-19 10:00 |  | Calendar 1 | 王安栋 | 2h | 王安栋 |
| 79 | 1.4.11.5 | 为每个需求分配唯一标示 | manual | 1h | 2018-11-19 08:00 | 2018-11-19 09:00 |  | Calendar 1 | 陈祥斌 | 1h | 陈祥斌 |
| 80 | 1.4.11.6 | 记录业务规则 | manual | 1h | 2018-11-16 08:00 | 2018-11-16 09:00 |  | Calendar 1 | 左文正 | 1h | 左文正 |
| 81 | 1.4.11.7 | 描述非功能性需求 | manual | 1h | 2018-11-19 08:00 | 2018-11-19 09:00 |  | Calendar 1 | 涂弘森 | 1h | 涂弘森 |
| 82 | 1.4.11.8 | 需求规格说明书--初步 | manual | 5h | 2018-11-21 17:00 | 2018-11-23 19:00 |  | Calendar 1 | 左文正 [20%]; 陈祥斌 [20%]; 刘向辉 [20%]; 涂弘森 [20%]; 王安栋 [20%] | 5h |  |
| 83 | 1.4.11.9 | 小组第十次会议 | milestone, manual | 1h | 2018-11-23 17:00 | 2018-11-23 18:00 | 75FS+13h | Calendar 1 | 左文正; 陈祥斌; 刘向辉; 涂弘森; 王安栋 | 5h | 左文正 |
| 84 | 1.4.11.10 | 第十次会议记录 | manual | 0.5h | 2018-11-23 16:00 | 2018-11-23 16:30 | 83FS-1h |  | 左文正 | 0.5h |  |

| ID | WBS | Task | Type | Duration | Start | Finish | Predecessors | Calendar | Resources | Work | 总负责人 |
| --- | --- | --- | --- | --- | --- | --- | --- | --- | --- | --- | --- |
| 85 | 1.4.12 | **需求验证** |  | 36h | 2018-11-27 08:00 | 2018-12-09 21:00 |  | Calendar 1 |  | 24h |  |
| 86 | 1.4.12.1 | 评审需求 | manual | 4h | 2018-11-27 17:00 | 2018-11-29 12:00 |  | Calendar 1 | 涂弘森 | 4h | 王安栋 |
| 87 | 1.4.12.2 | 测试需求 | manual | 2h | 2018-11-29 08:00 | 2018-11-29 10:00 |  | Calendar 1 | 王安栋 | 2h | 涂弘森 |
| 88 | 1.4.12.3 | 小组第十一次会议 | milestone, manual | 1h | 2018-11-30 17:00 | 2018-11-30 18:00 | 83FS+13h | Calendar 1 | 左文正; 陈祥斌; 刘向辉; 涂弘森; 王安栋 | 5h | 左文正 |
| 89 | 1.4.12.4 | 第十一次会议记录 | manual | 0.5h | 2018-11-30 16:00 | 2018-11-30 16:30 | 88FS-1h |  | 左文正 | 0.5h |  |
| 90 | 1.4.12.5 | 定义验收条件 | manual | 2h | 2018-11-30 08:00 | 2018-11-30 10:00 |  | Calendar 1 | 刘向辉 | 2h | 刘向辉 |
| 91 | 1.4.12.6 | 模拟需求 | manual | 1h | 2018-12-01 08:00 | 2018-12-01 09:00 |  | Calendar 1 | 左文正 | 1h | 左文正 |
| 92 | 1.4.12.7 | 软件需求规格说明书 | manual | 2h | 2018-12-02 08:00 | 2018-12-02 10:00 |  | Calendar 1 | 陈祥斌 | 2h | 陈祥斌 |
| 93 | 1.4.12.8 | 软件需求规格说明书修改 | manual | 2h | 2018-12-06 17:00 | 2018-12-06 20:00 | 92FS+8h | Calendar 1 | 左文正 [20%]; 陈祥斌 [20%]; 刘向辉 [20%]; 涂弘森 [20%]; 王安栋 [20%] | 2h |  |
| 94 | 1.4.12.9 | 小组第十二次会议 | milestone, manual | 1h | 2018-12-07 17:00 | 2018-12-07 18:00 | 88FS+13h | Calendar 1 | 左文正; 陈祥斌; 刘向辉; 涂弘森; 王安栋 | 5h | 左文正 |
| 95 | 1.4.12.10 | 第十二次会议记录 | manual | 0.5h | 2018-12-07 16:00 | 2018-12-07 16:30 | 94FS-1h |  | 左文正 | 0.5h |  |
| 96 | 1.4.13 | **需求管理** |  | 36h | 2018-12-11 08:00 | 2018-12-24 19:00 |  | Calendar 1 |  | 33.5h |  |
| 97 | 1.4.13.1 | 建立变更控制流程 | manual | 3h | 2018-12-11 17:00 | 2018-12-12 09:00 |  | Calendar 1 | 涂弘森 | 3h | 涂弘森 |
| 98 | 1.4.13.2 | 建立基线、管理需求版本 | manual | 3h | 2018-12-12 17:00 | 2018-12-13 18:00 |  | Calendar 1 | 陈祥斌 | 3h | 陈祥斌 |
| 99 | 1.4.13.3 | 分析变更影响 | manual | 2.5h | 2018-12-12 17:00 | 2018-12-13 17:30 |  | Calendar 1 | 王安栋 | 2.5h | 王安栋 |
| 100 | 1.4.13.4 | 小组第十三次会议 | milestone, manual | 1h | 2018-12-14 17:00 | 2018-12-14 18:00 | 94FS+13h | Calendar 1 | 左文正; 陈祥斌; 刘向辉; 涂弘森; 王安栋 | 5h | 左文正 |
| 101 | 1.4.13.5 | 第十三次会议记录 | manual | 1d | 2018-12-14 16:00 | 2018-12-14 18:00 | 100FS-1h |  | 左文正 | 2h |  |
| 102 | 1.4.13.6 | 维护变更历史 | manual | 2h | 2018-12-15 17:00 | 2018-12-15 20:00 |  | Calendar 1 | 刘向辉 | 2h | 刘向辉 |
| 103 | 1.4.13.7 | 跟踪需求状态 | manual | 2.5h | 2018-12-15 17:00 | 2018-12-16 08:30 |  | Calendar 1 | 左文正 | 2.5h | 左文正 |
| 104 | 1.4.13.8 | 跟踪需求问题 | manual | 3h | 2018-12-17 08:00 | 2018-12-17 11:00 |  | Calendar 1 | 刘向辉 | 3h | 刘向辉 |
| 105 | 1.4.13.9 | 软件需求变更文档 | manual | 2h | 2018-12-20 08:00 | 2018-12-20 10:00 |  | Calendar 1 | 陈祥斌 | 2h | 左文正 |
| 106 | 1.4.13.10 | 小组第十四次会议 | milestone, manual | 1h | 2018-12-21 17:00 | 2018-12-21 18:00 | 100FS+13h | Calendar 1 | 左文正; 陈祥斌; 刘向辉; 涂弘森; 王安栋 | 5h | 左文正 |
| 107 | 1.4.13.11 | 第十四次会议记录 | manual | 0.5h | 2018-12-21 16:00 | 2018-12-21 16:30 | 106FS-1h |  | 左文正 | 0.5h |  |
| 108 | 1.4.13.12 | 软件需求变更文档修改 | manual | 3h | 2018-12-22 19:00 | 2018-12-23 20:00 | 105FS+5h | Calendar 1 | 王安栋 [50%]; 涂弘森 [50%] | 3h | 王安栋 |

| ID | WBS | Task | Type | Duration | Start | Finish | Predecessors | Calendar | Resources | Work | 总负责人 |
| --- | --- | --- | --- | --- | --- | --- | --- | --- | --- | --- | --- |
| 109 | 1.5 | **概要设计** |  | 22h | 2018-12-25 17:00 | 2019-01-04 20:00 |  | Calendar 1 |  | 27.47h |  |
| 110 | 1.5.1 | 方案选择及前期文档的整理 | manual | 2h | 2018-12-26 08:00 | 2018-12-26 10:00 |  | Calendar 1 | 刘向辉 | 2h | 刘向辉 |
| 111 | 1.5.2 | 功能分解（IPO图）绘制 | manual | 3h | 2018-12-26 08:00 | 2018-12-26 11:00 |  | Calendar 1 | 涂弘森 [50%]; 王安栋 [50%] | 3h | 涂弘森 |
| 112 | 1.5.3 | 软件结构设计 | manual | 3h | 2018-12-27 08:00 | 2018-12-27 11:00 |  | Calendar 1 | 左文正 | 3h | 左文正 |
| 113 | 1.5.4 | 小组第十五次会议 | milestone, manual | 1h | 2018-12-28 17:00 | 2018-12-28 18:00 | 106FS+13h | Calendar 1 | 左文正; 陈祥斌; 刘向辉; 涂弘森; 王安栋 | 5h | 左文正 |
| 114 | 1.5.5 | 第十五次会议记录 | manual | 0.5h | 2018-12-28 16:00 | 2018-12-28 16:30 | 113FS-1h |  | 左文正 | 0.5h |  |
| 115 | 1.5.6 | 数据库设计 | manual | 3h | 2018-12-29 17:00 | 2018-12-30 19:00 |  | Calendar 1 | 陈祥斌 | 3h | 陈祥斌 |
| 116 | 1.5.7 | 系统设计与实现计划 | manual | 3h | 2018-12-29 08:00 | 2018-12-29 11:00 |  | Calendar 1 | 王安栋 [33%]; 涂弘森 [33%]; 陈祥斌 [33%] | 2.97h | 刘向辉 |
| 117 | 1.5.8 | 软件概要设计说明--初步 | manual | 4h | 2018-12-28 17:00 | 2018-12-29 10:00 |  | Calendar 1 | 左文正 [20%]; 陈祥斌 [20%]; 刘向辉 [20%]; 涂弘森 [20%]; 王安栋 [20%] | 4h |  |
| 118 | 1.5.9 | 软件概要设计说明--修改 | manual | 4h | 2018-12-29 17:00 | 2018-12-30 10:00 | 117 | Calendar 1 | 左文正 [20%]; 陈祥斌 [20%]; 刘向辉 [20%]; 涂弘森 [20%]; 王安栋 [20%] | 4h |  |
| 119 | 1.6 | **项目收尾** |  | 25h | 2019-01-01 17:00 | 2019-01-13 19:00 |  | Calendar 1 |  | 77h |  |
| 120 | 1.6.1 | 项目检验 | manual | 7h | 2019-01-01 17:00 | 2019-01-04 18:00 |  | Calendar 1 | 左文正 [20%]; 陈祥斌 [20%]; 刘向辉 [20%]; 涂弘森 [20%]; 王安栋 [20%] | 9h | 刘向辉 |
| 121 | 1.6.2 | 小组第十六次会议 | manual | 1h | 2019-01-04 17:00 | 2019-01-04 18:00 | 113FS+13h | Calendar 1 | 左文正; 陈祥斌; 刘向辉; 涂弘森; 王安栋 | 5h | 左文正 |
| 122 | 1.6.3 | 第十六次会议记录 | manual | 0.5h | 2019-01-04 16:00 | 2019-01-04 16:30 | 121FS-1h |  | 左文正 | 0.5h |  |
| 123 | 1.6.4 | 项目修改 | manual | 11h | 2019-01-05 19:00 | 2019-01-10 20:00 | 120FS+2h | Calendar 1 | 左文正; 陈祥斌; 刘向辉; 涂弘森; 王安栋 | 55h | 刘向辉 |
| 124 | 1.6.5 | 小组第十七次会议 | manual | 1h | 2019-01-11 17:00 | 2019-01-11 18:00 | 121FS+13h | Calendar 1 | 左文正; 陈祥斌; 刘向辉; 涂弘森; 王安栋 | 5h | 左文正 |
| 125 | 1.6.6 | 第十七次会议记录 | manual | 0.5h | 2019-01-11 16:00 | 2019-01-11 16:30 | 124FS-1h |  | 左文正 | 0.5h |  |
| 126 | 1.6.7 | 项目审核 | milestone, manual | 2h | 2019-01-12 17:00 | 2019-01-12 20:00 |  | Calendar 1 | 杨枨 [50%]; 侯宏仑 [50%] | 2h |  |
